Schedule from MS Project, 2026-09-04 to 2026-12-04, status date 2026-09-16, A marks actual dates.
Microsoft

## Calendars

- Standard: Mon-Fri 08:00-12:00, 13:00-17:00; Sat-Sun off. Exceptions (off unless hours are given): 2026-09-18 to 2026-09-19, 2026-10-12.

## Resources

| Resource |
| --- |
| BCH |

## Schedule

| ID | WBS | Task | Type | Duration | Start | Finish | Predecessors | Complete | Remaining | Actual start | Total slack | Work | Actual work | % Real | % Esperado | Text10 |
| --- | --- | --- | --- | --- | --- | --- | --- | --- | --- | --- | --- | --- | --- | --- | --- | --- |
| 1 | 1 | **GRM** |  | 63.2d | 2026-09-04 A | 2026-12-04 |  | 34% | 41.48d |  | 0d | 1056h | 552.8h | 33% | 34% | STATUS: |
| 2 | 2 | **PAP 1** |  | 1d | 2026-09-04 A | 2026-09-04 A |  | 100% |  |  |  |  |  |  | 100% |  |
| 3 | 2.1 | Pase Producción | manual | 1d | 2026-09-04 A | 2026-09-04 A |  | 100% |  |  |  | 8h |  |  | 100% |  |
| 4 | 3 | **Fase de Garantía** |  | 5d | 2026-09-04 | 2026-09-10 |  | 94% | 0.3d | 2026-09-07 | 0d | 96h | 86.4h |  | 100% |  |
| 5 | 3.1 | **Atenciones de Incidencias PAP** |  | 5d | 2026-09-04 | 2026-09-10 |  | 94% | 0.3d | 2026-09-07 |  | 96h | 86.4h |  | 100% |  |
| 6 | 3.1.1 | Desarrollo | manual | 4d | 2026-09-07 A | 2026-09-10 A | 3 | 100% |  |  |  | 32h |  |  | 100% |  |
| 7 | 3.1.2 | Pruebas Internas | manual | 4d | 2026-09-07 A | 2026-09-10 A | 3 | 100% |  |  |  | 32h |  |  | 100% |  |
| 8 | 3.1.3 | Entrega y despliegue en QA | manual | 4d | 2026-09-07 A | 2026-09-10 | 3 | 90% | 0.4d |  |  | 32h | 28.8h |  | 100% |  |
| 9 | 3.1.4 | Ejecucion de pruebas | manual | 4d | 2026-09-07 A | 2026-09-10 | 3 | 90% | 0.4d |  |  | 32h | 28.8h |  | 100% |  |
| 10 | 3.1.5 | Reuniones de Revisión UAT | manual | 4d | 2026-09-07 A | 2026-09-10 | 3 | 90% | 0.4d |  |  | 32h | 28.8h |  | 100% |  |
| 11 | 4 | **HU Postergadas Fase Garantía** |  | 58.2d | 2026-09-11 A | 2026-12-04 |  | 29% | 41.61d |  | 0d | 960h | 466.4h |  | 28% |  |
| 12 | 5 | **1 Caso Gobierno OK con OBS** |  | 8d | 2026-09-11 A | 2026-09-23 A |  | 100% |  |  |  | 64h | 64h |  | 100% |  |
| 13 | 5.1 | **OK con OBS: G_12_ RI_49.2** |  | 8d | 2026-09-11 A | 2026-09-23 A |  | 100% |  |  |  | 64h | 64h |  | 100% |  |
| 14 | 5.1.1 | Medición de Esfuerzo | milestone, manual | 0d | 2026-09-11 A | 2026-09-11 A | 10 | 100% |  |  |  |  |  |  | 100% |  |
| 15 | 5.1.2 | Análisis, Revision y Aprobacion | milestone, manual | 0d | 2026-09-11 A | 2026-09-11 A | 10 | 100% |  |  |  |  |  |  | 100% |  |
| 16 | 5.1.3 | Desarrollo | manual | 1d | 2026-09-11 A | 2026-09-14 A | 10 | 100% |  |  |  | 8h | 8h |  | 100% |  |
| 17 | 5.1.4 | Pruebas Internas | manual | 1d | 2026-09-14 A | 2026-09-15 A | 15 | 100% |  |  |  | 8h | 8h |  | 100% |  |
| 18 | 5.1.5 | Entrega y despliegue en QA | manual | 1d | 2026-09-16 A | 2026-09-17 A | 17 | 100% |  |  |  | 8h | 8h |  | 100% |  |
| 19 | 5.1.6 | Induccion de HU | manual | 1d | 2026-09-16 A | 2026-09-17 A | 17 | 100% |  |  |  | 8h | 8h |  | 100% |  |
| 20 | 5.1.7 | Ejecucion de pruebas ciclo 1 | manual | 1d | 2026-09-16 A | 2026-09-17 A | 17 | 100% |  |  |  | 8h | 8h |  | 100% |  |
| 21 | 5.1.8 | Reuniones de Revisión UAT | manual | 1d | 2026-09-16 A | 2026-09-17 A | 17 | 100% |  |  |  | 8h | 8h |  | 100% |  |
| 22 | 5.1.9 | Correcciones y despliegue | manual | 1d | 2026-09-21 A | 2026-09-22 A | 21 | 100% |  |  |  | 8h | 8h |  | 100% |  |
| 23 | 5.1.10 | Ejecucion de pruebas ciclo 2 | manual | 1d | 2026-09-23 A | 2026-09-23 A | 22 | 100% |  |  |  | 8h | 8h |  | 100% |  |
| 24 | 6 | **2 Casos Documentación OK con OBS** |  | 7d | 2026-09-11 A | 2026-09-22 |  | 85% | 1.05d |  | 0d | 72h | 60h |  | 85% |  |
| 25 | 6.1 | **OK con OBS: D_1.1, D_4.1** |  | 7d | 2026-09-11 A | 2026-09-22 |  | 85% | 1.05d |  | 0d | 72h | 60h |  | 85% |  |
| 26 | 6.1.1 | Medición de Esfuerzo | milestone, manual | 0d | 2026-09-11 A | 2026-09-11 A | 10 | 100% |  |  |  |  |  |  | 100% |  |
| 27 | 6.1.2 | Análisis, Revision y Aprobacion | manual | 1d | 2026-09-11 A | 2026-09-11 A | 10 | 100% |  |  |  | 8h | 8h |  | 100% |  |
| 28 | 6.1.3 | Desarrollo | manual | 2d | 2026-09-14 A | 2026-09-15 A | 27 | 100% |  |  |  | 8h | 8h |  | 100% |  |
| 29 | 6.1.4 | Pruebas Internas | manual | 1d | 2026-09-16 A | 2026-09-16 A | 28 | 100% |  |  |  | 8h | 8h |  | 100% |  |
| 30 | 6.1.5 | Entrega y despliegue en QA | manual | 1d | 2026-09-17 A | 2026-09-17 A | 29 | 100% |  |  |  | 8h | 8h |  | 100% |  |
| 31 | 6.1.6 | Induccion de HU | manual | 1d | 2026-09-17 A | 2026-09-17 A | 29 | 100% |  |  |  | 8h | 8h |  | 100% |  |
| 32 | 6.1.7 | Ejecucion de pruebas ciclo 1 | manual | 1d | 2026-09-17 A | 2026-09-17 A | 29 | 100% |  |  |  | 8h | 8h |  | 100% |  |
| 33 | 6.1.8 | Reuniones de Revisión UAT | manual | 1d | 2026-09-17 A | 2026-09-17 A | 29 | 100% |  |  |  | 8h | 8h |  | 100% |  |
| 34 | 6.1.9 | Correcciones y despliegue | manual | 1d | 2026-09-21 A | 2026-09-21 | 30 | 50% | 0.5d |  |  | 8h | 4h |  | 50% |  |
| 35 | 6.1.10 | Ejecucion de pruebas ciclo 2 | manual | 1d | 2026-09-22 | 2026-09-22 | 34 |  |  |  |  | 8h |  |  | 0% |  |

Notes:
- 28: Equipo: INTERNO. Horas estimadas (Excel): 4h.

| ID | WBS | Task | Duration | Start | Finish | Predecessors | Complete | Remaining | Total slack | Free slack | Work | Actual work | % Esperado | Text10 |
| --- | --- | --- | --- | --- | --- | --- | --- | --- | --- | --- | --- | --- | --- | --- |
| 36 | 7 | **3 Casos Incidencias OK con OBS** | 9.5d | 2026-09-11 A | 2026-09-25 |  | 82% | 1.73d | 48.7d |  | 88h | 72h | 82% |  |
| 37 | 7.1 | **OK con OBS: IN_5.3, IN_7.1, IN_9.3** | 9.5d | 2026-09-11 A | 2026-09-25 |  | 82% | 1.73d | 48.7d |  | 88h | 72h | 82% |  |
| 38 | 7.1.1 | Medición de Esfuerzo | 1d | 2026-09-11 A | 2026-09-11 A |  | 100% |  |  |  | 8h | 8h | 100% |  |
| 39 | 7.1.2 | Análisis, Revision y Aprobacion | 1d | 2026-09-11 A | 2026-09-11 A |  | 100% |  |  |  | 8h | 8h | 100% | Se desarrollaran luego de revision en fase de garantia |
| 40 | 7.1.3 | Desarrollo | 2d | 2026-09-14 A | 2026-09-15 A | 39 | 100% |  |  |  | 16h | 16h | 100% |  |
| 41 | 7.1.4 | Pruebas Internas | 1d | 2026-09-15 A | 2026-09-15 A | 40 | 100% |  |  |  | 8h | 8h | 100% |  |
| 42 | 7.1.5 | Entrega y despliegue en QA | 1d | 2026-09-16 A | 2026-09-16 A | 41 | 100% |  |  |  | 8h | 8h | 100% |  |
| 43 | 7.1.6 | Induccion de HU | 1d | 2026-09-16 A | 2026-09-16 A | 41 | 100% |  |  |  | 8h | 8h | 100% |  |
| 44 | 7.1.7 | Ejecucion de pruebas ciclo 1 | 1d | 2026-09-17 A | 2026-09-17 A | 43 | 100% |  |  |  | 8h | 8h | 100% |  |
| 45 | 7.1.8 | Reuniones de Revisión UAT | 1d | 2026-09-21 A | 2026-09-21 A | 44 | 100% |  |  |  | 8h | 8h | 100% |  |
| 46 | 7.1.9 | Correcciones y despliegue | 1d | 2026-09-22 | 2026-09-24 | 45 |  |  | 48.7d | 0d | 8h |  | 0% |  |
| 47 | 7.1.10 | Ejecucion de pruebas ciclo 2 | 1d | 2026-09-24 | 2026-09-25 | 46 |  |  | 48.7d |  | 8h |  | 0% |  |
| 48 | 8 | **3 Casos Filiales OK con OBS** | 9d | 2026-09-11 A | 2026-09-24 A |  | 100% |  |  |  | 80h | 80h | 100% | Se desarrollaran luego de revision en fase de garantia |
| 49 | 8.1 | **OK con OBS: F_2.1, F_10.2, F_11.2** | 9d | 2026-09-11 A | 2026-09-24 A |  | 100% |  |  |  | 80h | 80h | 100% |  |
| 50 | 8.1.1 | Medición de Esfuerzo | 1d | 2026-09-11 A | 2026-09-11 A |  | 100% |  |  |  | 8h | 8h | 100% |  |
| 51 | 8.1.2 | Análisis, Revision y Aprobacion | 1d | 2026-09-14 A | 2026-09-14 A | 50 | 100% |  |  |  | 8h | 8h | 100% |  |
| 52 | 8.1.3 | Desarrollo | 2d | 2026-09-14 A | 2026-09-15 A | 50 | 100% |  |  |  | 8h | 8h | 100% |  |
| 53 | 8.1.4 | Pruebas Internas | 1d | 2026-09-16 A | 2026-09-16 A | 52 | 100% |  |  |  | 8h | 8h | 100% |  |
| 54 | 8.1.5 | Entrega y despliegue en QA | 1d | 2026-09-17 A | 2026-09-17 A | 53 | 100% |  |  |  | 8h | 8h | 100% |  |
| 55 | 8.1.6 | Induccion de HU | 1d | 2026-09-17 A | 2026-09-17 A | 53 | 100% |  |  |  | 8h | 8h | 100% |  |
| 56 | 8.1.7 | Ejecucion de pruebas ciclo 1 | 1d | 2026-09-21 A | 2026-09-21 A | 55 | 100% |  |  |  | 8h | 8h | 100% |  |
| 57 | 8.1.8 | Reuniones de Revisión UAT | 1d | 2026-09-22 A | 2026-09-22 A | 56 | 100% |  |  |  | 8h | 8h | 100% |  |
| 58 | 8.1.9 | Correcciones y despliegue | 1d | 2026-09-23 A | 2026-09-23 A | 57 | 100% |  |  |  | 8h | 8h | 100% |  |
| 59 | 8.1.10 | Ejecucion de pruebas ciclo 2 | 1d | 2026-09-24 A | 2026-09-24 A | 58 | 100% |  |  |  | 8h | 8h | 100% |  |

Notes:
- 40: Equipo: INTERNO. Horas estimadas (Excel): 3h.

| ID | WBS | Task | Duration | Start | Finish | Predecessors | Complete | Remaining | Total slack | Free slack | Constraint | Work | Actual work | % Esperado |
| --- | --- | --- | --- | --- | --- | --- | --- | --- | --- | --- | --- | --- | --- | --- |
| 60 | 9 | **4 Casos Información inventario - OK con OBS** | 6d | 2026-09-22 A | 2026-09-29 A |  | 100% |  |  |  |  | 80h | 80h | 100% |
| 61 | 9.1 | **OK con OBS: II_10.2, II_13.2** | 6d | 2026-09-22 A | 2026-09-29 A |  | 100% |  |  |  |  | 80h | 80h | 100% |
| 62 | 9.1.1 | Medición de Esfuerzo | 1d | 2026-09-22 A | 2026-09-22 A | 58 | 100% |  |  |  |  | 8h | 8h | 100% |
| 63 | 9.1.2 | Análisis, Revision y Aprobacion | 1d | 2026-09-22 A | 2026-09-22 A | 58 | 100% |  |  |  |  | 8h | 8h | 100% |
| 64 | 9.1.3 | Desarrollo | 2d | 2026-09-23 A | 2026-09-24 A | 63 | 100% |  |  |  |  | 8h | 8h | 100% |
| 65 | 9.1.4 | Pruebas Internas | 1d | 2026-09-23 A | 2026-09-23 A | 63 | 100% |  |  |  |  | 8h | 8h | 100% |
| 66 | 9.1.5 | Entrega y despliegue en QA | 1d | 2026-09-25 A | 2026-09-25 A | 64 | 100% |  |  |  |  | 8h | 8h | 100% |
| 67 | 9.1.6 | Induccion de HU | 1d | 2026-09-25 A | 2026-09-25 A | 64 | 100% |  |  |  |  | 8h | 8h | 100% |
| 68 | 9.1.7 | Ejecucion de pruebas ciclo 1 | 1d | 2026-09-25 A | 2026-09-25 A | 64 | 100% |  |  |  |  | 8h | 8h | 100% |
| 69 | 9.1.8 | Reuniones de Revisión UAT | 1d | 2026-09-25 A | 2026-09-25 A | 64 | 100% |  |  |  |  | 8h | 8h | 100% |
| 70 | 9.1.9 | Correcciones y despliegue | 1d | 2026-09-28 A | 2026-09-28 A | 69 | 100% |  |  |  |  | 8h | 8h | 100% |
| 71 | 9.1.10 | Ejecucion de pruebas ciclo 2 | 1d | 2026-09-29 A | 2026-09-29 A | 70 | 100% |  |  |  |  | 8h | 8h | 100% |
| 72 | 10 | **14 Casos Validación- OK con OBS** | 10d | 2026-09-21 A | 2026-10-02 |  | 17% | 8.33d | 43.2d |  |  | 112h | 16h | 17% |
| 73 | 10.1 | **OK con OBS: V_30.1, V_36.1** | 10d | 2026-09-21 A | 2026-10-02 |  | 17% | 8.33d | 43.2d |  |  | 112h | 16h | 17% |
| 74 | 10.1.1 | Medición de Esfuerzo | 1d | 2026-09-21 A | 2026-09-21 A |  | 100% |  |  |  |  | 8h | 8h | 100% |
| 75 | 10.1.2 | Análisis, Revision y Aprobacion | 1d | 2026-09-21 A | 2026-09-21 A |  | 100% |  |  |  |  | 8h | 8h | 100% |
| 76 | 10.1.3 | Desarrollo | 2d | 2026-09-22 | 2026-09-23 | 75 |  |  | 0d |  | start no earlier than 2025-07-21 | 40h |  | 0% |
| 77 | 10.1.4 | Pruebas Internas | 1d | 2026-09-24 | 2026-09-24 | 76 |  |  | 0d |  |  | 8h |  | 0% |
| 78 | 10.1.5 | Entrega y despliegue en QA | 1d | 2026-09-25 | 2026-09-25 | 77 |  |  | 48.2d |  |  | 8h |  | 0% |
| 79 | 10.1.6 | Induccion de HU | 1d | 2026-09-25 | 2026-09-25 | 77 |  |  | 10.2d | 0d |  | 8h |  | 0% |
| 80 | 10.1.7 | Ejecucion de pruebas ciclo 1 | 1d | 2026-09-28 | 2026-09-28 | 79 |  |  | 10.2d | 0d |  | 8h |  | 0% |
| 81 | 10.1.8 | Reuniones de Revisión UAT | 1d | 2026-09-29 | 2026-09-29 | 80 |  |  | 10.2d | 0d |  | 8h |  | 0% |
| 82 | 10.1.9 | Correcciones y despliegue | 2d | 2026-09-30 | 2026-10-01 | 81 |  |  | 10.2d | 0d |  | 8h |  | 0% |
| 83 | 10.1.10 | Ejecucion de pruebas ciclo 2 | 1d | 2026-10-02 | 2026-10-02 | 82 |  |  | 43.2d |  |  | 8h |  | 0% |

Notes:
- 64: Equipo: INTERNO. Horas estimadas (Excel): 12h.
- 76: Equipo: INTERNO. Horas estimadas (Excel): 8h.

| ID | WBS | Task | Duration | Start | Finish | Predecessors | Complete | Remaining | Total slack | Free slack | Work | Actual work | % Esperado |
| --- | --- | --- | --- | --- | --- | --- | --- | --- | --- | --- | --- | --- | --- |
| 84 | 13 | **27 Casos Registro Información** | 34d | 2026-10-02 | 2026-11-19 | 82 |  |  | 10.2d |  | 64h |  | 0% |
| 85 | 14 | **Hus Garantía: RI_1, RI_3, RI_4, RI_49 (RI_49.1), RI_63-67** | 34d | 2026-10-02 | 2026-11-19 | 82 |  |  | 10.2d |  | 64h |  | 0% |
| 86 | 14.1 | Medición de Esfuerzo | 1d | 2026-10-02 | 2026-10-02 | 82 |  |  | 43.2d |  | 8h |  | 0% |
| 87 | 14.2 | Análisis, Revision y Aprobacion | 1d | 2026-10-02 | 2026-10-02 | 82 |  |  | 43.2d |  | 8h |  | 0% |
| 88 | 14.3 | Desarrollo | 25d | 2026-10-02 | 2026-11-06 | 82 |  |  | 10.2d | 0d | 8h |  | 0% |
| 89 | 14.4 | Pruebas Internas | 1d | 2026-11-09 | 2026-11-09 | 88 |  |  | 10.2d | 0d | 8h |  | 0% |
| 90 | 14.5 | Entrega y despliegue en QA | 1d | 2026-11-10 | 2026-11-10 | 89 |  |  | 10.2d | 0d | 8h |  | 0% |
| 91 | 14.6 | Induccion de HU | 1d | 2026-11-11 | 2026-11-11 | 90 |  |  | 10.2d | 0d | 8h |  | 0% |
| 92 | 14.7 | Ejecucion de pruebas ciclo 1 | 3d | 2026-11-12 | 2026-11-16 | 91 |  |  | 10.2d | 0d | 8h |  | 0% |
| 93 | 14.8 | Reuniones de Revisión UAT | 1d | 2026-11-17 | 2026-11-17 | 92 |  |  | 10.2d | 0d | 8h |  | 0% |
| 94 | 14.9 | Correcciones y despliegue | 1d | 2026-11-18 | 2026-11-18 | 93 |  |  | 10.2d | 0d | 8h |  | 0% |
| 95 | 14.10 | Ejecucion de pruebas ciclo 2 | 1d | 2026-11-19 | 2026-11-19 | 94 |  |  | 10.2d |  | 8h |  | 0% |
| 96 | 11 | **27 Casos Seguimiento y Control** | 33d | 2026-09-17 A | 2026-11-04 | 42 | 11% | 29.26d | 21.2d |  | 240h | 48h | 11% |
| 97 | 11.1 | **OK con OBS: SC_8.4, SC_12.2, SC_29.1,SC_ 47.1** | 10d | 2026-09-17 A | 2026-10-01 | 42 | 15% | 8.46d | 44.2d |  | 80h | 16h | 15% |
| 98 | 11.1.1 | Medición de Esfuerzo | 1d | 2026-09-17 A | 2026-09-17 A | 42 | 100% |  |  |  | 8h | 8h | 100% |
| 99 | 11.1.2 | Análisis, Revision y Aprobacion | 1d | 2026-09-17 A | 2026-09-17 A | 42 | 100% |  |  |  | 8h | 8h | 100% |
| 100 | 11.1.3 | Desarrollo | 4d | 2026-09-17 | 2026-09-23 | 42 |  |  | 0d |  | 8h |  | 0% |
| 101 | 11.1.4 | Pruebas Internas | 1d | 2026-09-24 | 2026-09-24 | 100 |  |  | 0d |  | 8h |  | 0% |
| 102 | 11.1.5 | Entrega y despliegue en QA | 1d | 2026-09-25 | 2026-09-25 | 101 |  |  | 48.2d |  | 8h |  | 0% |
| 103 | 11.1.6 | Induccion de HU | 1d | 2026-09-25 | 2026-09-25 | 101 |  |  | 44.2d | 0d | 8h |  | 0% |
| 104 | 11.1.7 | Ejecucion de pruebas ciclo 1 | 1d | 2026-09-28 | 2026-09-28 | 103 |  |  | 44.2d | 0d | 8h |  | 0% |
| 105 | 11.1.8 | Reuniones de Revisión UAT | 1d | 2026-09-29 | 2026-09-29 | 104 |  |  | 44.2d | 0d | 8h |  | 0% |
| 106 | 11.1.9 | Correcciones y despliegue | 1d | 2026-09-30 | 2026-09-30 | 105 |  |  | 44.2d | 0d | 8h |  | 0% |
| 107 | 11.1.10 | Ejecucion de pruebas ciclo 2 | 1d | 2026-10-01 | 2026-10-01 | 106 |  |  | 44.2d |  | 8h |  | 0% |

Notes:
- 100: Equipo: INTERNO. Horas estimadas (Excel): 9h.

| ID | WBS | Task | Duration | Start | Finish | Predecessors | Complete | Remaining | Total slack | Free slack | Work | Actual work | % Esperado |
| --- | --- | --- | --- | --- | --- | --- | --- | --- | --- | --- | --- | --- | --- |
| 108 | 11.2 | **NOK: SC_3.1, SC_3.7, SC_15.4, SC_30.1, SC_30.2, SC_31.2** | 9d | 2026-09-25 A | 2026-10-07 | 100 | 15% | 7.62d | 40.2d |  | 80h | 16h | 15% |
| 109 | 11.2.1 | Medición de Esfuerzo | 1d | 2026-09-25 A | 2026-09-25 A | 101 | 100% |  |  |  | 8h | 8h | 100% |
| 110 | 11.2.2 | Análisis, Revision y Aprobacion | 1d | 2026-09-25 A | 2026-09-25 A | 101 | 100% |  |  |  | 8h | 8h | 100% |
| 111 | 11.2.3 | Desarrollo | 4d | 2026-09-25 | 2026-09-30 | 101 |  |  | 0d |  | 8h |  | 0% |
| 112 | 11.2.4 | Pruebas Internas | 1d | 2026-10-01 | 2026-10-01 | 111 |  |  | 44.2d |  | 8h |  | 0% |
| 113 | 11.2.5 | Entrega y despliegue en QA | 1d | 2026-10-01 | 2026-10-01 | 111 |  |  | 44.2d |  | 8h |  | 0% |
| 114 | 11.2.6 | Induccion de HU | 1d | 2026-10-01 | 2026-10-01 | 111 |  |  | 40.2d | 0d | 8h |  | 0% |
| 115 | 11.2.7 | Ejecucion de pruebas ciclo 1 | 1d | 2026-10-02 | 2026-10-02 | 114 |  |  | 40.2d | 0d | 8h |  | 0% |
| 116 | 11.2.8 | Reuniones de Revisión UAT | 1d | 2026-10-05 | 2026-10-05 | 115 |  |  | 40.2d | 0d | 8h |  | 0% |
| 117 | 11.2.9 | Correcciones y despliegue | 1d | 2026-10-06 | 2026-10-06 | 116 |  |  | 40.2d | 0d | 8h |  | 0% |
| 118 | 11.2.10 | Ejecucion de pruebas ciclo 2 | 1d | 2026-10-07 | 2026-10-07 | 117 |  |  | 40.2d |  | 8h |  | 0% |
| 119 | 11.3 | **HU Garantía: SC_2.5, SC_6.1, SC_8.6, SC_14.3, SC_19.1, SC_19.2, SC_23.1, SC_24.4, SC_24.5, SC_26.1, SC_34.1, SC_38.4, SC_41.2, SC_42.2** | 24d | 2026-10-01 A | 2026-11-04 | 111 | 7% | 22.22d | 21.2d |  | 80h | 16h | 7% |
| 120 | 11.3.1 | Medición de Esfuerzo | 1d | 2026-10-01 A | 2026-10-01 A | 111 | 100% |  |  |  | 8h | 8h | 100% |
| 121 | 11.3.2 | Análisis, Revision y Aprobacion | 1d | 2026-10-01 A | 2026-10-01 A | 111 | 100% |  |  |  | 8h | 8h | 100% |
| 122 | 11.3.3 | Desarrollo | 15d | 2026-10-01 | 2026-10-22 | 111 |  |  | 21.2d | 0d | 8h |  | 0% |
| 123 | 11.3.4 | Pruebas Internas | 1d | 2026-10-23 | 2026-10-23 | 122 |  |  | 21.2d | 0d | 8h |  | 0% |
| 124 | 11.3.5 | Entrega y despliegue en QA | 1d | 2026-10-26 | 2026-10-26 | 123 |  |  | 28.2d |  | 8h |  | 0% |
| 125 | 11.3.6 | Induccion de HU | 1d | 2026-10-26 | 2026-10-26 | 123 |  |  | 21.2d | 0d | 8h |  | 0% |
| 126 | 11.3.7 | Ejecucion de pruebas ciclo 1 | 2d | 2026-10-27 | 2026-10-28 | 125 |  |  | 21.2d | 0d | 8h |  | 0% |
| 127 | 11.3.8 | Reuniones de Revisión UAT | 1d | 2026-10-29 | 2026-10-29 | 126 |  |  | 21.2d | 0d | 8h |  | 0% |
| 128 | 11.3.9 | Correcciones y despliegue | 2d | 2026-10-30 | 2026-11-02 | 127 |  |  | 21.2d | 0d | 8h |  | 0% |
| 129 | 11.3.10 | Ejecucion de pruebas ciclo 2 | 2d | 2026-11-03 | 2026-11-04 | 128 |  |  | 21.2d |  | 8h |  | 0% |
| 130 | 12 | **47 Casos Mejoras trasnversales** | 48.2d | 2026-09-23 A | 2026-12-01 |  | 10% | 43.21d | 3d |  | 160h | 46.4h | 7% |
| 131 | 12.1 | **NOK: MT_14.2, MT_14.3, MT_15.1, MT_15.2** | 7.2d | 2026-09-23 A | 2026-10-02 |  | 38% | 4.46d | 44d |  | 80h | 30.4h | 38% |
| 132 | 12.1.1 | Medición de Esfuerzo | 1d | 2026-09-23 A | 2026-09-23 A | 77 | 100% |  |  |  | 8h | 8h | 100% |
| 133 | 12.1.2 | Análisis, Revision y Aprobacion | 1d | 2026-09-23 A | 2026-09-23 A | 77 | 100% |  |  |  | 8h | 8h | 100% |
| 134 | 12.1.3 | Desarrollo | 1d | 2026-09-23 A | 2026-09-25 | 77 | 90% | 0.1d | 0d |  | 8h | 7.2h | 90% |
| 135 | 12.1.4 | Pruebas Internas | 1d | 2026-09-24 A | 2026-09-25 | 134 | 90% | 0.1d | 0d |  | 8h | 7.2h | 90% |
| 136 | 12.1.5 | Entrega y despliegue en QA | 1d | 2026-09-25 | 2026-09-28 | 135 |  |  | 48d |  | 8h |  | 0% |
| 137 | 12.1.6 | Induccion de HU | 1d | 2026-09-25 | 2026-09-28 | 135 |  |  | 0d |  | 8h |  | 0% |
| 138 | 12.1.7 | Ejecucion de pruebas ciclo 1 | 1d | 2026-09-28 | 2026-09-29 | 137 |  |  | 0d |  | 8h |  | 0% |
| 139 | 12.1.8 | Reuniones de Revisión UAT | 1d | 2026-09-29 | 2026-09-30 | 138 |  |  | 0d |  | 8h |  | 0% |
| 140 | 12.1.9 | Correcciones y despliegue | 1d | 2026-09-30 | 2026-10-01 | 139 |  |  | 44d | 0d | 8h |  | 0% |
| 141 | 12.1.10 | Ejecucion de pruebas ciclo 2 | 1d | 2026-10-01 | 2026-10-02 | 140 |  |  | 44d |  | 8h |  | 0% |

Notes:
- 109: Equipo: INTERNO. Estándar (1 día).
- 110: Equipo: INTERNO. Estándar (1 día).
- 111: Equipo: INTERNO. Horas estimadas (Excel): 17h.
- 112: Equipo: INTERNO. Estándar (1 día).
- 113: Equipo: INTERNO. Estándar (1 día).
- 114: Equipo: INTERNO. Estándar (1 día).
- 115: Equipo: EXTERNO. Mínimo 1 día (8h).
- 116: Equipo: EXTERNO. Mínimo 1 día (8h).
- 117: Equipo: EXTERNO. Mínimo 1 día (8h).
- 118: Equipo: EXTERNO. Mínimo 1 día (8h).
- 120: Equipo: INTERNO. Estándar (1 día).
- 121: Equipo: INTERNO. Estándar (1 día).
- 122: Equipo: INTERNO. Horas estimadas (Excel): 52h.
- 123: Equipo: INTERNO. Estándar (1 día).
- 124: Equipo: INTERNO. Estándar (1 día).
- 125: Equipo: INTERNO. Estándar (1 día).
- 126: Equipo: EXTERNO. Mínimo 1 día (8h).
- 127: Equipo: EXTERNO. Mínimo 1 día (8h).
- 128: Equipo: EXTERNO. Mínimo 1 día (8h).
- 129: Equipo: EXTERNO. Mínimo 1 día (8h).
- 132: Equipo: INTERNO. Estándar (1 día).
- 133: Equipo: INTERNO. Estándar (1 día).
- 134: Equipo: INTERNO. Horas estimadas (Excel): 2h.
- 135: Equipo: INTERNO. Estándar (1 día).
- 136: Equipo: INTERNO. Estándar (1 día).
- 137: Equipo: INTERNO. Estándar (1 día).
- 138: Equipo: EXTERNO. Mínimo 1 día (8h).
- 139: Equipo: EXTERNO. Mínimo 1 día (8h).
- 140: Equipo: EXTERNO. Mínimo 1 día (8h).
- 141: Equipo: EXTERNO. Mínimo 1 día (8h).

| ID | WBS | Task | Type | Duration | Start | Finish | Predecessors | Complete | Remaining | Total slack | Free slack | Work | Actual work | % Esperado |
| --- | --- | --- | --- | --- | --- | --- | --- | --- | --- | --- | --- | --- | --- | --- |
| 142 | 12.2 | **HU Garantía: MT_11, MT_19, MT_21, MT_25, MT_26, MT_27, MT_29, MT_32, MT_33, MT_38, MT_39** |  | 43d | 2026-09-30 A | 2026-12-01 | 139 | 4% | 41.13d | 3d |  | 80h | 16h | 0% |
| 143 | 12.2.1 | Medición de Esfuerzo |  | 1d | 2026-09-30 A | 2026-10-01 A | 139 | 100% |  |  |  | 8h | 8h | 0% |
| 144 | 12.2.2 | Análisis, Revision y Aprobacion |  | 1d | 2026-09-30 A | 2026-10-01 A | 139 | 100% |  |  |  | 8h | 8h | 0% |
| 145 | 12.2.3 | Desarrollo |  | 28d | 2026-09-30 | 2026-11-10 | 139 |  |  | 0d |  | 8h |  | 0% |
| 146 | 12.2.4 | Pruebas Internas |  | 5d | 2026-11-10 | 2026-11-17 | 145 |  |  | 0d |  | 8h |  | 0% |
| 147 | 12.2.5 | Entrega y despliegue en QA |  | 1d | 2026-11-17 | 2026-11-18 | 146 |  |  | 12d |  | 8h |  | 0% |
| 148 | 12.2.6 | Induccion de HU |  | 1d | 2026-11-17 | 2026-11-18 | 146 |  |  | 0d |  | 8h |  | 0% |
| 149 | 12.2.7 | Ejecucion de pruebas ciclo 1 |  | 5d | 2026-11-18 | 2026-11-25 | 148 |  |  | 0d |  | 8h |  | 0% |
| 150 | 12.2.8 | Reuniones de Revisión UAT |  | 1d | 2026-11-25 | 2026-11-26 | 149 |  |  | 3d | 0d | 8h |  | 0% |
| 151 | 12.2.9 | Correcciones y despliegue |  | 2d | 2026-11-26 | 2026-11-30 | 150 |  |  | 3d | 0d | 8h |  | 0% |
| 152 | 12.2.10 | Ejecucion de pruebas ciclo 2 |  | 1d | 2026-11-30 | 2026-12-01 | 151 |  |  | 3d | 0d | 8h |  | 0% |
| 153 | 15 | **PAP 2** |  | 0d | 2026-12-01 | 2026-12-01 |  |  |  | 3d |  |  |  | 0% |
| 154 | 15.1 | Coordinacion PAP | milestone | 0d | 2026-12-01 | 2026-12-01 | 152 |  |  | 3d | 0d |  |  | 0% |
| 155 | 15.2 | Ejecución PAP | milestone | 0d | 2026-12-01 | 2026-12-01 | 154 |  |  | 3d |  |  |  | 0% |
| 156 | 16 | **Documentación Actualización** |  | 7d | 2026-11-25 | 2026-12-04 | 149 |  |  | 0d |  |  |  | 0% |
| 157 | 16.1 | Documento Técnica Actualización |  | 3d | 2026-11-25 | 2026-11-30 | 149 |  |  | 0d |  |  |  | 0% |
| 158 | 16.2 | Manual de Usuario Actualización |  | 3d | 2026-11-30 | 2026-12-03 | 157 |  |  | 0d |  |  |  | 0% |
| 159 | 16.3 | Aprobaciones Documentos |  | 1d | 2026-12-03 | 2026-12-04 | 158 |  |  | 0d |  |  |  | 0% |

Notes:
- 143: Equipo: INTERNO. Estándar (1 día).
- 144: Equipo: INTERNO. Estándar (1 día).
- 145: Equipo: INTERNO. Horas estimadas (Excel): 81h.
- 146: Equipo: INTERNO. Estándar (1 día).
- 147: Equipo: INTERNO. Estándar (1 día).
- 148: Equipo: INTERNO. Estándar (1 día).
- 149: Equipo: EXTERNO. Mínimo 1 día (8h).
- 150: Equipo: EXTERNO. Mínimo 1 día (8h).
- 151: Equipo: EXTERNO. Mínimo 1 día (8h).
- 152: Equipo: EXTERNO. Mínimo 1 día (8h).
